# 智维集控平台

Schedule from a web Gantt chart, 2026-06-08 to 2026-08-15.
Every day is a working day

## Schedule

| ID | WBS | Task | Duration | Start | Finish | Predecessors | Status |
| --- | --- | --- | --- | --- | --- | --- | --- |
| 2 | 1 | **平台基础能力** | 11d | 2026-06-08 | 2026-06-18 |  |  |
| 3 | 1.1 | 数据权限管理 | 2d | 2026-06-08 | 2026-06-09 |  |  |
| 4 | 1.2 | 租户管理 | 2d | 2026-06-10 | 2026-06-11 | 3 | waiting |
| 5 | 1.3 | 国际化 | 2d | 2026-06-12 | 2026-06-13 | 4 | waiting |
| 6 | 1.4 | 组织权限管理 | 3d | 2026-06-14 | 2026-06-16 | 5 | waiting |
| 7 | 1.5 | 审计日志 | 2d | 2026-06-17 | 2026-06-18 | 6 | waiting |
| 8 | 2 | **3.6.6 配置管理优化与电站快速接入能力建设** | 21d | 2026-06-19 | 2026-07-09 |  |  |
| 9 | 2.1 | 场站管理 | 2d | 2026-06-19 | 2026-06-20 | 2 | waiting |
| 10 | 2.2 | 设备类型管理 | 1d | 2026-06-21 | 2026-06-21 | 9 | waiting |
| 11 | 2.3 | 设备型号管理 | 1d | 2026-06-22 | 2026-06-22 | 10 | waiting |
| 12 | 2.4 | 设备管理 | 2d | 2026-06-23 | 2026-06-24 | 11 | waiting |
| 13 | 2.5 | 测点管理 | 2d | 2026-06-28 | 2026-06-29 | 21 | waiting |
| 14 | 2.6 | 测点物模型映射配置 | 2d | 2026-06-30 | 2026-07-01 | 13 | waiting |
| 15 | 2.7 | 测点计算规则配置 | 2d | 2026-07-02 | 2026-07-03 | 14 | waiting |
| 16 | 2.8 | 告警规则配置 | 1d | 2026-07-04 | 2026-07-04 | 15 | waiting |
| 17 | 2.9 | 告警屏蔽管理 | 1d | 2026-07-05 | 2026-07-05 | 16 | waiting |
| 18 | 2.10 | 告警通知管理 | 2d | 2026-07-06 | 2026-07-07 | 17 | waiting |
| 19 | 2.11 | 数据清洗规则管理 | 1d | 2026-07-08 | 2026-07-08 | 18 | waiting |
| 20 | 2.12 | 数据补录规则管理 | 1d | 2026-07-09 | 2026-07-09 | 19 | waiting |
| 21 | 3 | **3.5.1 一体化驾驶舱指标体系梳理** | 3d | 2026-06-25 | 2026-06-27 |  |  |
| 22 | 3.1 | 指标管理 | 1d | 2026-06-25 | 2026-06-25 | 12 | waiting |
| 23 | 3.2 | 物模型管理 | 2d | 2026-06-26 | 2026-06-27 | 22 | waiting |
| 24 | 4 | **3.5.3 一体化驾驶舱指标数据计算引擎开发** | 15d | 2026-07-10 | 2026-07-24 |  |  |
| 25 | 4.1 | MQTT通讯前置服务 | 2d | 2026-07-10 | 2026-07-11 | 8 | waiting |
| 26 | 4.2 | 实时/历史流数据处理引擎 | 5d | 2026-07-12 | 2026-07-16 | 25 | waiting |
| 27 | 4.3 | 数据清洗服务 | 1d | 2026-07-17 | 2026-07-17 | 26 | waiting |
| 28 | 4.4 | 告警计算服务器 | 1d | 2026-07-18 | 2026-07-18 | 27 | waiting |
| 29 | 4.5 | 计算规则引擎 | 2d | 2026-07-19 | 2026-07-20 | 28 | waiting |
| 30 | 4.6 | 数据存储服务 | 1d | 2026-07-22 | 2026-07-22 | 29, 32 | waiting |
| 31 | 4.7 | 缓存同步服务 | 2d | 2026-07-23 | 2026-07-24 | 30 | waiting |
| 32 | 5 | 3.6.3 时序数据库与采集数据存储架构优化 | 1d | 2026-07-21 | 2026-07-21 | 29 | waiting |

| ID | WBS | Task | Duration | Start | Finish | Predecessors | Status |
| --- | --- | --- | --- | --- | --- | --- | --- |
| 33 | 6 | **3.3 一体化驾驶舱专业视图板块** | 22d | 2026-07-25 | 2026-08-15 |  |  |
| 34 | 6.1 | 混合能源类型场站概览 | 2d | 2026-07-25 | 2026-07-26 | 24 | waiting |
| 35 | 6.2 | 光伏场站概览 | 1d | 2026-07-27 | 2026-07-27 | 34 | waiting |
| 36 | 6.3 | 逆变器状态监视 | 1d | 2026-07-28 | 2026-07-28 | 35 | waiting |
| 37 | 6.4 | 设备发电监视 | 1d | 2026-07-29 | 2026-07-29 | 36 | waiting |
| 38 | 6.5 | 升压站监视 | 1d | 2026-07-30 | 2026-07-30 | 37 | waiting |
| 39 | 6.6 | 集电线路监视 | 1d | 2026-07-31 | 2026-07-31 | 38 | waiting |
| 40 | 6.7 | 箱变监视 | 1d | 2026-08-01 | 2026-08-01 | 39 | waiting |
| 41 | 6.8 | 逆变器监视 | 1d | 2026-08-02 | 2026-08-02 | 40 | waiting |
| 42 | 6.9 | 气象站监视 | 1d | 2026-08-03 | 2026-08-03 | 41 | waiting |
| 43 | 6.10 | 电表监视 | 1d | 2026-08-04 | 2026-08-04 | 42 | waiting |
| 44 | 6.11 | 其他设备监视 | 1d | 2026-08-05 | 2026-08-05 | 43 | waiting |
| 45 | 6.12 | 光伏场站概览 | 1d | 2026-08-06 | 2026-08-06 | 44 | waiting |
| 46 | 6.13 | 风机状态监视 | 1d | 2026-08-07 | 2026-08-07 | 45 | waiting |
| 47 | 6.14 | 测风塔监视 | 1d | 2026-08-08 | 2026-08-08 | 46 | waiting |
| 48 | 6.15 | 储能电站概览 | 1d | 2026-08-09 | 2026-08-09 | 47 | waiting |
| 49 | 6.16 | 储能单元监视 | 1d | 2026-08-10 | 2026-08-10 | 48 | waiting |
| 50 | 6.17 | PCS监视 | 1d | 2026-08-11 | 2026-08-11 | 49 | waiting |
| 51 | 6.18 | 电池堆监视 | 1d | 2026-08-12 | 2026-08-12 | 50 | waiting |
| 52 | 6.19 | 电池簇监视 | 1d | 2026-08-13 | 2026-08-13 | 51 | waiting |
| 53 | 6.20 | 电池包监视 | 1d | 2026-08-14 | 2026-08-14 | 52 | waiting |
| 54 | 6.21 | 电芯监视 | 1d | 2026-08-15 | 2026-08-15 | 53 | waiting |
| 55 | 7 | **3.1.5 智慧场站门户** | 1d | 2026-06-08 | 2026-06-08 |  |  |
| 56 | 7.1 | 总量 | 1d | 2026-06-08 | 2026-06-08 |  |  |
| 57 | 8 | 区域总量 | 1d | 2026-06-08 | 2026-06-08 |  |  |
